# Planificacion proyecto final

Schedule from MS Project, 2014-03-11 to 2015-01-09, costs in $.

## Calendars

- Estándar: Mon-Fri 09:00-13:00, 15:00-19:00; Sat-Sun off.

## Resources

| Resource | Group | Rate |
| --- | --- | --- |
| Echevarrieta Romina | Analista; Tester | 100 |
| Manna Walter | Programador | 80 |
| Ponce Matías | Líder; Programador | 150 |
| Sánchez Maximiliano | Analista; Tester | 100 |
| Soler Joaquín | Programador; Admin. BD | 120 |

## Schedule

| ID | WBS | Task | Duration | Start | Finish | Predecessors | Total slack | Free slack | Constraint | Resources | Work | Cost |
| --- | --- | --- | --- | --- | --- | --- | --- | --- | --- | --- | --- | --- |
| 1 | 1 | **Definición de Requerimientos** | 56d | 2014-03-11 | 2014-05-27 |  | 0d |  |  |  | 969.8h | 105,684 |
| 2 | 1.1 | Definir roles y equipos de trabajo | 4d | 2014-03-11 | 2014-03-14 |  | 0d |  | start no earlier than 2014-03-11 | Ponce Matías [50%]; Manna Walter [50%] | 24h | 3,040 |
| 3 | 1.2 | Definir metodologías de comunicación y de reuniones | 4d | 2014-04-08 | 2014-04-11 |  | 32d |  |  | Ponce Matías [50%]; Echevarrieta Romina [50%] | 32h | 4,000 |
| 4 | 1.3 | **Relevamiento General** | 21.25d | 2014-03-17 | 2014-04-15 |  | 4.75d | 0d |  |  | 225h | 26,420 |
| 5 | 1.3.1 | Realizar entrevista | 7d | 2014-03-17 | 2014-03-25 | 2 | 4.75d | 0d |  | Ponce Matías | 56h | 8,400 |
| 6 | 1.3.2 | Detectar funciones e interfaces | 14d | 2014-03-26 | 2014-04-14 | 5 | 5d |  |  | Sánchez Maximiliano [50%]; Soler Joaquín [50%] | 112h | 12,320 |
| 7 | 1.3.3 | Relevar implementacion del sistema | 14.25d | 2014-03-26 | 2014-04-15 | 5 | 4.75d |  |  | Echevarrieta Romina [50%] | 57h | 5,700 |
| 8 | 1.4 | Investigar y documentar características de la tecnología a utilizar | 40d | 2014-03-17 | 2014-05-09 | 2 | 0d |  |  | Manna Walter [50%]; Soler Joaquín [50%] | 320h | 32,000 |
| 9 | 1.5 | Planificar capacitación para el equipo | 3d | 2014-05-12 | 2014-05-14 | 8 | 9d |  |  | Manna Walter [50%]; Soler Joaquín [50%] | 24h | 2,400 |
| 10 | 1.6 | **Relevamiento Detallado** | 5d | 2014-03-26 | 2014-04-01 |  | 14d | 9.25d |  |  | 40h | 4,000 |
| 11 | 1.6.1 | Describir detalladamente funciones detectadas | 5d | 2014-03-26 | 2014-04-01 | 5 | 2d |  |  | Echevarrieta Romina [50%]; Sánchez Maximiliano [50%] | 40h | 4,000 |
| 12 | 1.7 | **Diagnostico de la situacion actual** | 30.75d | 2014-04-15 | 2014-05-27 |  | 0d |  |  |  | 304.8h | 33,824 |
| 13 | 1.7.1 | Relevar modelo lógico del sistema actual | 7d | 2014-04-15 | 2014-04-24 | 4, 10 | 4.75d | 0d |  | Soler Joaquín [50%]; Manna Walter [50%] | 56h | 5,600 |
| 14 | 1.7.2 | Detallar problemas y necesidades detectadas en las funciones relevadas | 4d | 2014-04-15 | 2014-04-21 | 4, 10 | 7.75d | 0d |  | Echevarrieta Romina [50%]; Sánchez Maximiliano [50%] | 32h | 3,200 |
| 15 | 1.7.3 | Describir objetivos y alcances preeliminares del sistema | 4d | 2014-04-21 | 2014-04-25 | 4, 10, 14 | 7.75d | 0d |  | Sánchez Maximiliano [50%]; Echevarrieta Romina [50%] | 32h | 3,200 |
| 16 | 1.7.4 | **Estudio de Factibilidad** | 23.75d | 2014-04-24 | 2014-05-27 |  | 0d |  |  |  | 184.8h | 21,824 |
| 17 | 1.7.4.1 | Definir y describir los recursos para cada unas de las actividades | 10d | 2014-04-24 | 2014-05-08 | 4, 10, 13 | 4.75d | 0d |  | Manna Walter [20%]; Sánchez Maximiliano [20%]; Soler Joaquín [20%]; Echevarrieta Romina [20%]; Ponce Matías [20%] | 28.8h | 2,784 |
| 18 | 1.7.4.2 | Realizar digrama de recursos | 2d | 2014-05-08 | 2014-05-12 | 17 | 4.75d |  |  | Manna Walter [50%]; Ponce Matías [50%] | 12h | 1,240 |
| 19 | 1.7.4.3 | Realizar análisis de riesgo | 5d | 2014-05-12 | 2014-05-16 | 14, 15, 8, 13 | 0d |  |  | Ponce Matías | 40h | 6,000 |
| 20 | 1.7.4.4 | Realizar análisis de impacto ambiental | 8d | 2014-04-25 | 2014-05-07 | 14, 15 | 7.75d |  |  | Sánchez Maximiliano [50%]; Echevarrieta Romina [50%] | 48h | 4,800 |
| 21 | 1.7.4.5 | Realizar análisis de costos desagregados por recursos | 2d | 2014-05-19 | 2014-05-20 | 17, 18, 19, 20 | 0d |  |  | Echevarrieta Romina | 16h | 1,600 |
| 22 | 1.7.4.6 | Realizar análisis de factibilidad | 5d | 2014-05-21 | 2014-05-27 | 17, 18, 19, 20, 21 | 0d |  |  | Soler Joaquín [50%]; Ponce Matías [50%] | 40h | 5,400 |
| 23 | 2 | **Diseño** | 36d | 2014-05-28 | 2014-07-16 |  | 0d |  |  |  | 312h | 32,080 |
| 24 | 2.1 | Definir objetivos y alcances definitivos del nuevo sistema | 3d | 2014-05-28 | 2014-05-30 | 1 | 0d |  |  | Echevarrieta Romina [50%]; Manna Walter [50%] | 24h | 2,160 |
| 25 | 2.2 | Definir salidas del sistema | 3d | 2014-05-28 | 2014-05-30 | 1 | 0d |  |  | Soler Joaquín | 24h | 2,880 |
| 26 | 2.3 | Realizar Modelo Funcional del sistema | 12d | 2014-06-02 | 2014-06-17 | 24, 25 | 0d |  |  | Echevarrieta Romina [50%]; Sánchez Maximiliano [50%] | 96h | 9,600 |
| 27 | 2.4 | Realizar Modelo de Datos | 5d | 2014-06-18 | 2014-06-24 | 26 | 0d |  |  | Echevarrieta Romina [50%]; Soler Joaquín [50%] | 40h | 4,400 |
| 28 | 2.5 | Realizar Diagrama de Clases | 5d | 2014-06-25 | 2014-07-01 | 27 | 0d |  |  | Echevarrieta Romina | 40h | 4,000 |
| 29 | 2.6 | Indentificar Módulos del Sistema | 3d | 2014-07-02 | 2014-07-04 | 27, 28 | 0d |  |  | Soler Joaquín [50%]; Sánchez Maximiliano [50%] | 24h | 2,640 |
| 30 | 2.7 | Realizar Planificación de pruebas | 3d | 2014-07-07 | 2014-07-09 | 29 | 0d |  |  | Sánchez Maximiliano | 24h | 2,400 |
| 31 | 2.8 | Diseñar Casos de Prueba a realizar | 5d | 2014-07-10 | 2014-07-16 | 30 | 0d |  |  | Sánchez Maximiliano | 40h | 4,000 |

| ID | WBS | Task | Duration | Start | Finish | Predecessors | Total slack | Resources | Work | Cost |
| --- | --- | --- | --- | --- | --- | --- | --- | --- | --- | --- |
| 32 | 3 | **Desarrollo e Implementación** | 126.33d | 2014-07-17 | 2015-01-09 |  | 0d |  | 1096h | 118,880 |
| 33 | 3.1 | Realizar Configuración Inicial de Herramientas y Entornos | 20d | 2014-07-17 | 2014-08-13 | 23 | 0d | Manna Walter [50%]; Soler Joaquín [50%] | 120h | 11,200 |
| 34 | 3.2 | Relizar programación | 63d | 2014-08-14 | 2014-11-10 | 33 | 0d | Soler Joaquín [40%]; Manna Walter [30%]; Echevarrieta Romina [10%]; Ponce Matías [10%]; Sánchez Maximiliano [10%] | 504h | 53,928 |
| 35 | 3.3 | Ejecutar pruebas | 20d | 2014-11-11 | 2014-12-08 | 34 | 0d | Echevarrieta Romina [50%]; Sánchez Maximiliano [50%] | 160h | 16,000 |
| 36 | 3.4 | Realizar Plan de Capacitación | 23.33d | 2014-12-09 | 2015-01-09 | 35 | 0d | Ponce Matías [30%]; Manna Walter [40%]; Soler Joaquín [40%] | 128.8h | 16,016 |
| 37 | 3.5 | Definir Normas y Procedimientos para Implementación del Sistema | 14d | 2014-12-09 | 2014-12-26 | 35 | 9.33d | Ponce Matías [25%]; Soler Joaquín [25%]; Manna Walter [25%]; Echevarrieta Romina [25%] | 84h | 10,080 |
| 38 | 3.6 | Desarrollar Manual de Usuario | 4d | 2014-12-09 | 2014-12-12 | 35 | 19.33d | Sánchez Maximiliano [50%]; Echevarrieta Romina [50%] | 32h | 3,200 |
| 39 | 3.7 | Realizar Planificación de la Implementacion del Sistema | 17.5d | 2014-12-09 | 2015-01-01 | 35 | 5.83d | Ponce Matías [40%]; Soler Joaquín [20%]; Manna Walter [20%] | 67.2h | 8,456 |
